# Patitas Encontradas — Red Comunitaria de Mascotas en Pilar

Schedule from MS Project XML, 2026-08-24 to 2026-10-26, status date 2026-10-26, A marks actual dates.
Universidad Nacional de Pilar (UNP) — Cátedra Testing y Calidad

## Calendars

- Estándar: Mon-Fri 08:00-12:00, 13:00-17:00; Sat-Sun off.

## Resources

| Resource | Group | Rate |
| --- | --- | --- |
| Jonatan Rosas | Célula 1 | 8500 |
| Sol Careaga | Célula 3 | 8500 |
| Rodrigo Paz | Célula 2 | 8500 |
| Maximiliano Duarte | Célula 2 | 8500 |
| Francisco González | Célula 1 | 8500 |
| Yerik Ramos | Célula 3 | 8500 |
| Martina Guenin | Célula 3 | 8500 |
| Pedro Brest | Docente / Evaluador |  |

## Schedule

| ID | WBS | Task | Duration | Start | Finish | Predecessors | Complete | Resources | Work | Costos | Number1 | Number2 | Number6 |
| --- | --- | --- | --- | --- | --- | --- | --- | --- | --- | --- | --- | --- | --- |
| 1 | 1 | **Patitas Encontradas — Red Comunitaria de Mascotas en Pilar** | 45d | 2026-08-24 A | 2026-10-26 A |  | 100% |  | 360h | V | 45 | 360 | 100 |
| 2 | 1.1 | **Reunión inicial y Organización del Equipo** | 2d | 2026-08-24 A | 2026-08-25 A |  | 100% |  | 16h | T | 2 | 16 | 100 |
| 3 | 1.1.1 | División del equipo y asignación de roles (PO, SM, Células) | 1d | 2026-08-24 A | 2026-08-24 A |  | 100% | Jonatan Rosas [50%]; Sol Careaga [50%] | 8h | T | 1 | 8 | 100 |
| 4 | 1.1.2 | Kickoff del proyecto y definición del alcance sociocomunitario | 1d | 2026-08-24 A | 2026-08-24 A |  | 100% | Pedro Brest [10%]; Jonatan Rosas [15%]; Sol Careaga [15%]; Rodrigo Paz [15%]; Maximiliano Duarte [15%]; Francisco González [15%]; Yerik Ramos [15%] | 8h | T | 1 | 8 | 100 |
| 5 | 1.1.3 | Definir estándares formales, TypeScript estricto y stack Expo 57 | 1d | 2026-08-25 A | 2026-08-25 A | 3 | 100% | Jonatan Rosas [50%]; Maximiliano Duarte [50%] | 8h | T | 1 | 8 | 100 |
| 6 | 1.2 | **Diagnóstico Territorial y Análisis Funcional** | 13d | 2026-08-25 A | 2026-09-10 A | 2 | 100% |  | 104h | V | 13 | 104 | 100 |
| 7 | 1.2.1 | Relevamiento territorial y mapeo colectivo en Pilar (5 Meets) | 4d | 2026-08-25 A | 2026-08-28 A | 4 | 100% | Sol Careaga [50%]; Martina Guenin [50%] | 32h | V | 4 | 32 | 100 |
| 8 | 1.2.2 | Elaboración del árbol de problemas y matriz de actores | 2d | 2026-08-31 A | 2026-09-01 A | 7 | 100% | Sol Careaga [50%]; Jonatan Rosas [50%] | 16h | V | 2 | 16 | 100 |
| 9 | 1.2.3 | Especificación formal de requerimientos (SRS - RF-1 a RF-5) | 2d | 2026-09-01 A | 2026-09-02 A | 8 | 100% | Jonatan Rosas [50%]; Sol Careaga [50%] | 16h | V | 2 | 16 | 100 |
| 10 | 1.2.4 | Priorización MoSCoW y definición de Criterios de Aceptación CA1 a CA6 | 1d | 2026-09-03 A | 2026-09-03 A | 9 | 100% | Jonatan Rosas [50%]; Rodrigo Paz [50%] | 8h | V | 1 | 8 | 100 |
| 11 | 1.2.5 | Armado del diagrama de contexto del sistema | 1d | 2026-09-03 A | 2026-09-03 A | 10 | 100% | Rodrigo Paz | 8h | T | 1 | 8 | 100 |
| 12 | 1.2.6 | Armado del Diagrama de Flujo de Datos (DFD) Nivel 0 | 1d | 2026-09-04 A | 2026-09-04 A | 11 | 100% | Rodrigo Paz [50%]; Jonatan Rosas [50%] | 8h | V | 1 | 8 | 100 |
| 13 | 1.2.7 | Armado del Diagrama de Flujo de Datos (DFD) Nivel 1 | 2d | 2026-09-04 A | 2026-09-07 A | 12 | 100% | Rodrigo Paz [50%]; Maximiliano Duarte [50%] | 16h | T | 2 | 16 | 100 |
| 14 | 1.2.8 | Armado del diccionario de datos y modelos de persistencia | 2d | 2026-09-07 A | 2026-09-08 A | 13 | 100% | Maximiliano Duarte [50%]; Rodrigo Paz [50%] | 16h | V | 2 | 16 | 100 |
| 15 | 1.2.9 | Creación del MS Project y plan de gestión | 2d | 2026-09-07 A | 2026-09-08 A | 10 | 100% | Jonatan Rosas [50%]; Sol Careaga [50%] | 16h | V | 2 | 16 | 100 |
| 16 | 1.2.10 | Armado de la red PERT/CPM y cálculo de holguras | 2d | 2026-09-08 A | 2026-09-09 A | 15 | 100% | Jonatan Rosas [50%]; Rodrigo Paz [50%] | 16h | V | 2 | 16 | 100 |
| 17 | 1.2.11 | Armado del cronograma Gantt y análisis de varianza | 1d | 2026-09-09 A | 2026-09-09 A | 16 | 100% | Sol Careaga [50%]; Jonatan Rosas [50%] | 8h | V | 1 | 8 | 100 |
| 18 | 1.2.12 | Creación de la matriz RACI | 1d | 2026-09-09 A | 2026-09-09 A | 15 | 100% | Sol Careaga [50%]; Yerik Ramos [50%] | 8h | T | 1 | 8 | 100 |
| 19 | 1.2.13 | Creación de la matriz de riesgos y control semáforo | 1d | 2026-09-10 A | 2026-09-10 A | 18 | 100% | Rodrigo Paz [50%]; Jonatan Rosas [50%] | 8h | V | 1 | 8 | 100 |
| 20 | 1.3 | **Diseño UX/UI, Wireframes y Accesibilidad** | 5d | 2026-09-07 A | 2026-09-11 A | 9 | 100% |  | 40h | T | 5 | 40 | 100 |
| 21 | 1.3.1 | Diseño de wireframes y flujos de navegación en Padlet | 2d | 2026-09-07 A | 2026-09-08 A | 9 | 100% | Sol Careaga [50%]; Martina Guenin [50%] | 16h | T | 2 | 16 | 100 |
| 22 | 1.3.2 | Prueba de usabilidad temprana con vecina real de Pilar | 1d | 2026-09-09 A | 2026-09-09 A | 21 | 100% | Sol Careaga [50%]; Martina Guenin [50%] | 8h | V | 1 | 8 | 100 |
| 23 | 1.3.3 | Auditoría de accesibilidad WCAG 2.1 AA (contraste 13.5:1 y táctil >=48dp) | 1d | 2026-09-10 A | 2026-09-10 A | 22 | 100% | Sol Careaga [50%]; Yerik Ramos [50%] | 8h | V | 1 | 8 | 100 |
| 24 | 1.3.4 | Evaluación heurística según las 10 reglas de Jakob Nielsen | 1d | 2026-09-11 A | 2026-09-11 A | 23 | 100% | Sol Careaga [50%]; Yerik Ramos [50%] | 8h | T | 1 | 8 | 100 |
| 25 | 1.3.5 | Definición de tokens de diseño y paleta de colores (theme.ts) | 2d | 2026-09-09 A | 2026-09-10 A | 21 | 100% | Jonatan Rosas [50%]; Sol Careaga [50%] | 16h | V | 2 | 16 | 100 |

| ID | WBS | Task | Duration | Start | Finish | Predecessors | Complete | Resources | Work | Costos | Number1 | Number2 | Number6 |
| --- | --- | --- | --- | --- | --- | --- | --- | --- | --- | --- | --- | --- | --- |
| 26 | 1.4 | **Setup de Arquitectura Base y Persistencia** | 10d | 2026-09-07 A | 2026-09-18 A | 5 | 100% |  | 80h | R | 10 | 80 | 100 |
| 27 | 1.4.1 | Inicialización de Expo SDK 57 con Expo Router | 2d | 2026-09-07 A | 2026-09-08 A | 5 | 100% | Jonatan Rosas [50%]; Francisco González [50%] | 16h | V | 2 | 16 | 100 |
| 28 | 1.4.2 | Configuración de TypeScript estricto y convenciones de código | 1d | 2026-09-09 A | 2026-09-09 A | 27 | 100% | Jonatan Rosas | 8h | T | 1 | 8 | 100 |
| 29 | 1.4.3 | Creación del Singleton ConexionFirebase (Auth, Firestore, Storage) | 4d | 2026-09-10 A | 2026-09-15 A | 28 | 100% | Jonatan Rosas [50%]; Sol Careaga [50%] | 32h | R | 4 | 32 | 100 |
| 30 | 1.4.4 | Implementación de persistencia de sesión con AsyncStorage | 3d | 2026-09-16 A | 2026-09-18 A | 29 | 100% | Jonatan Rosas [50%]; Francisco González [50%] | 24h | A | 3 | 24 | 100 |
| 31 | 1.5 | **Módulo de Autenticación y Perfil de Usuario** | 13d | 2026-09-14 A | 2026-09-30 A | 25 | 100% |  | 104h | A | 13 | 104 | 100 |
| 32 | 1.5.1 | Maquetación de pantallas de Login y Registro | 2d | 2026-09-14 A | 2026-09-15 A | 25 | 100% | Francisco González [50%]; Sol Careaga [50%] | 16h | T | 2 | 16 | 100 |
| 33 | 1.5.2 | Esquemas de validación Zod para credenciales y datos personales | 2d | 2026-09-16 A | 2026-09-17 A | 32 | 100% | Francisco González | 16h | T | 2 | 16 | 100 |
| 34 | 1.5.3 | Integración con Firebase Authentication | 3d | 2026-09-18 A | 2026-09-22 A | 30, 33 | 100% | Francisco González [50%]; Jonatan Rosas [50%] | 24h | A | 3 | 24 | 100 |
| 35 | 1.5.4 | Implementación de AuthContext y manejo reactivo de sesión | 2d | 2026-09-23 A | 2026-09-24 A | 34 | 100% | Jonatan Rosas [50%]; Francisco González [50%] | 16h | V | 2 | 16 | 100 |
| 36 | 1.5.5 | Pantalla de Perfil de Usuario y gestión de datos de contacto | 2d | 2026-09-25 A | 2026-09-28 A | 35 | 100% | Francisco González | 16h | T | 2 | 16 | 100 |
| 37 | 1.5.6 | Sincronización persistente de foto de perfil en Firebase Storage | 2d | 2026-09-29 A | 2026-09-30 A | 36 | 100% | Jonatan Rosas [50%]; Francisco González [50%] | 16h | V | 2 | 16 | 100 |
| 38 | 1.6 | **Módulo de Mapa Interactivo y Geolocalización** | 18d | 2026-09-10 A | 2026-10-05 A | 28 | 100% |  | 144h | R | 18 | 144 | 100 |
| 39 | 1.6.1 | Implementación inicial de mapa nativo (detección de pantalla negra) | 4d | 2026-09-10 A | 2026-09-15 A | 28 | 100% | Martina Guenin [50%]; Jonatan Rosas [50%] | 32h | R | 4 | 32 | 100 |
| 40 | 1.6.2 | Refactorización arquitectónica a Leaflet 1.9.4 sobre WebView | 4d | 2026-09-16 A | 2026-09-21 A | 39 | 100% | Jonatan Rosas [50%]; Martina Guenin [50%] | 32h | R | 4 | 32 | 100 |
| 41 | 1.6.3 | Integración de capas libres CartoDB Voyager y OpenStreetMap | 2d | 2026-09-22 A | 2026-09-23 A | 40 | 100% | Jonatan Rosas [50%]; Maximiliano Duarte [50%] | 16h | V | 2 | 16 | 100 |
| 42 | 1.6.4 | Construcción del puente bidireccional postMessage para eventos táctiles | 2d | 2026-09-24 A | 2026-09-25 A | 41 | 100% | Jonatan Rosas | 16h | V | 2 | 16 | 100 |
| 43 | 1.6.5 | Hook de gestión de estado useMapState y centrado de cámara | 3d | 2026-09-28 A | 2026-09-30 A | 42 | 100% | Maximiliano Duarte [50%]; Jonatan Rosas [50%] | 24h | V | 3 | 24 | 100 |
| 44 | 1.6.6 | Algoritmo de validación de coordenadas geoValidation de Pilar | 2d | 2026-09-29 A | 2026-09-30 A | 43 | 100% | Maximiliano Duarte [50%]; Rodrigo Paz [50%] | 16h | V | 2 | 16 | 100 |
| 45 | 1.6.7 | Renderizado dinámico de marcadores y tarjetas flotantes de alerta | 3d | 2026-10-01 A | 2026-10-05 A | 44 | 100% | Maximiliano Duarte [50%]; Martina Guenin [50%] | 24h | V | 3 | 24 | 100 |
| 46 | 1.7 | **Módulo de Publicación de Alertas de Mascotas** | 11d | 2026-09-25 A | 2026-10-09 A | 35 | 100% |  | 88h | R | 11 | 88 | 100 |
| 47 | 1.7.1 | Formulario guiado de publicación (Perdido, Encontrado, Avistado) | 3d | 2026-09-25 A | 2026-09-29 A | 35 | 100% | Maximiliano Duarte [50%]; Rodrigo Paz [50%] | 24h | T | 3 | 24 | 100 |
| 48 | 1.7.2 | Integración de presets geográficos de barrios de Pilar | 2d | 2026-09-30 A | 2026-10-01 A | 47 | 100% | Maximiliano Duarte | 16h | V | 2 | 16 | 100 |
| 49 | 1.7.3 | Captura y selección fotográfica con expo-image-picker | 2d | 2026-10-01 A | 2026-10-02 A | 47 | 100% | Maximiliano Duarte [50%]; Rodrigo Paz [50%] | 16h | T | 2 | 16 | 100 |
| 50 | 1.7.4 | Solución de subida de fotos en Base64 a Firebase Storage | 3d | 2026-10-05 A | 2026-10-07 A | 49 | 100% | Jonatan Rosas [50%]; Maximiliano Duarte [50%] | 24h | R | 3 | 24 | 100 |
| 51 | 1.7.5 | Escritura y sanitización en colección alertas de Firestore | 2d | 2026-10-08 A | 2026-10-09 A | 50 | 100% | Maximiliano Duarte [50%]; Rodrigo Paz [50%] | 16h | V | 2 | 16 | 100 |

| ID | WBS | Task | Duration | Start | Finish | Predecessors | Complete | Resources | Work | Costos | Number1 | Number2 | Number6 |
| --- | --- | --- | --- | --- | --- | --- | --- | --- | --- | --- | --- | --- | --- |
| 52 | 1.8 | **Módulo de Feed de Alertas (Home) y Búsqueda** | 11d | 2026-09-24 A | 2026-10-08 A | 25 | 100% |  | 88h | A | 11 | 88 | 100 |
| 53 | 1.8.1 | Diseño modular de tarjetas de mascota (PetCard) | 2d | 2026-09-24 A | 2026-09-25 A | 25 | 100% | Yerik Ramos [50%]; Sol Careaga [50%] | 16h | T | 2 | 16 | 100 |
| 54 | 1.8.2 | Conexión en tiempo real a Firestore y pull-to-refresh | 3d | 2026-09-28 A | 2026-09-30 A | 53, 29 | 100% | Yerik Ramos [50%]; Maximiliano Duarte [50%] | 24h | A | 3 | 24 | 100 |
| 55 | 1.8.3 | Filtros interactivos por especie y estado del animal | 2d | 2026-10-01 A | 2026-10-02 A | 54 | 100% | Yerik Ramos [50%]; Maximiliano Duarte [50%] | 16h | V | 2 | 16 | 100 |
| 56 | 1.8.4 | Barra de búsqueda rápida por nombre, barrio y características | 2d | 2026-10-05 A | 2026-10-06 A | 55 | 100% | Yerik Ramos | 16h | V | 2 | 16 | 100 |
| 57 | 1.8.5 | Fallback resiliente ante pérdida de conexión (MOCK_MASCOTAS) | 2d | 2026-10-07 A | 2026-10-08 A | 56 | 100% | Yerik Ramos [50%]; Rodrigo Paz [50%] | 16h | V | 2 | 16 | 100 |
| 58 | 1.9 | **Módulo de Ficha Detalle y Redirección Comunitaria** | 9d | 2026-10-06 A | 2026-10-16 A | 51, 54 | 100% |  | 72h | V | 9 | 72 | 100 |
| 59 | 1.9.1 | Pantalla dinámica de detalle de mascota (/detalle/[id].tsx) | 3d | 2026-10-06 A | 2026-10-08 A | 51, 54 | 100% | Rodrigo Paz [50%]; Yerik Ramos [50%] | 24h | T | 3 | 24 | 100 |
| 60 | 1.9.2 | Enlace profundo a WhatsApp (wa.me) con mensaje contextualizado | 2d | 2026-10-09 A | 2026-10-12 A | 59 | 100% | Rodrigo Paz [50%]; Jonatan Rosas [50%] | 16h | V | 2 | 16 | 100 |
| 61 | 1.9.3 | Botón de avistamiento comunitario ('¡Lo vi!') con GPS | 2d | 2026-10-13 A | 2026-10-14 A | 60 | 100% | Rodrigo Paz [50%]; Sol Careaga [50%] | 16h | V | 2 | 16 | 100 |
| 62 | 1.9.4 | Integración de API nativa para compartir publicación en redes | 2d | 2026-10-14 A | 2026-10-15 A | 59 | 100% | Yerik Ramos [50%]; Sol Careaga [50%] | 16h | T | 2 | 16 | 100 |
| 63 | 1.9.5 | Marcado de alerta como 'Mascota encontrada' y cierre de caso | 2d | 2026-10-15 A | 2026-10-16 A | 61 | 100% | Sol Careaga [50%]; Rodrigo Paz [50%] | 16h | V | 2 | 16 | 100 |
| 64 | 1.9.6 | Eliminación de publicación con validación estricta de autorId | 2d | 2026-10-15 A | 2026-10-16 A | 59, 36 | 100% | Francisco González [50%]; Rodrigo Paz [50%] | 16h | V | 2 | 16 | 100 |
| 65 | 1.10 | **Centro de Soporte, Ayuda y Portada** | 25d | 2026-09-16 A | 2026-10-21 A | 25 | 100% |  | 200h | V | 25 | 200 | 100 |
| 66 | 1.10.1 | Diseño de vista de soporte con selector de pestañas | 2d | 2026-09-16 A | 2026-09-17 A | 25 | 100% | Sol Careaga [50%]; Jonatan Rosas [50%] | 16h | T | 2 | 16 | 100 |
| 67 | 1.10.2 | Acordeón interactivo con las 9 preguntas frecuentes oficiales | 2d | 2026-09-18 A | 2026-09-21 A | 66 | 100% | Sol Careaga [50%]; Yerik Ramos [50%] | 16h | V | 2 | 16 | 100 |
| 68 | 1.10.3 | Formulario de tickets y persistencia en tickets_soporte | 3d | 2026-10-19 A | 2026-10-21 A | 67, 29 | 100% | Sol Careaga [50%]; Jonatan Rosas [50%] | 24h | V | 3 | 24 | 100 |
| 69 | 1.10.4 | Guía de uso interactiva en 4 pasos (GuiaDeUso.tsx) | 2d | 2026-10-09 A | 2026-10-12 A | 67 | 100% | Sol Careaga | 16h | T | 2 | 16 | 100 |
| 70 | 1.10.5 | Pantalla de Bienvenida interactiva y modo invitado | 2d | 2026-10-19 A | 2026-10-20 A | 69 | 100% | Jonatan Rosas [50%]; Yerik Ramos [50%] | 16h | V | 2 | 16 | 100 |
| 71 | 1.10.6 | Pantalla de Ajustes de la aplicación | 1d | 2026-10-01 A | 2026-10-01 A | 25 | 100% | Yerik Ramos | 8h | T | 1 | 8 | 100 |
| 72 | 1.11 | **Aseguramiento de Calidad, Testing y Verificación (Testware)** | 35d | 2026-09-07 A | 2026-10-23 A | 9 | 100% |  | 280h | V | 35 | 280 | 100 |
| 73 | 1.11.1 | Diseño del Plan Maestro de Pruebas y Matriz de Casos | 3d | 2026-09-07 A | 2026-09-09 A | 9 | 100% | Rodrigo Paz [50%]; Jonatan Rosas [50%] | 24h | V | 3 | 24 | 100 |
| 74 | 1.11.2 | Suite de pruebas de estrés, concurrencia y fuzzing (19 tests) | 3d | 2026-10-12 A | 2026-10-14 A | 73, 56 | 100% | Rodrigo Paz [50%]; Maximiliano Duarte [50%] | 24h | V | 3 | 24 | 100 |
| 75 | 1.11.3 | Suite de pruebas de integración y seguridad de autor (10 tests) | 3d | 2026-10-15 A | 2026-10-19 A | 64, 36 | 100% | Rodrigo Paz [50%]; Francisco González [50%] | 24h | V | 3 | 24 | 100 |
| 76 | 1.11.4 | Suite de validación geométrica de límites de Pilar (10 tests) | 2d | 2026-10-01 A | 2026-10-02 A | 44 | 100% | Rodrigo Paz [50%]; Maximiliano Duarte [50%] | 16h | V | 2 | 16 | 100 |
| 77 | 1.11.5 | Suite de pruebas de WhatsApp y ficha detalle (5 tests) | 2d | 2026-10-16 A | 2026-10-19 A | 60 | 100% | Rodrigo Paz [50%]; Sol Careaga [50%] | 16h | V | 2 | 16 | 100 |
| 78 | 1.11.6 | Suite de pruebas de publicación y fotos Storage (5 tests) | 2d | 2026-10-08 A | 2026-10-09 A | 51 | 100% | Rodrigo Paz [50%]; Maximiliano Duarte [50%] | 16h | V | 2 | 16 | 100 |
| 79 | 1.11.7 | Suite de pruebas de UI y FAQs (4 tests) | 2d | 2026-09-22 A | 2026-09-23 A | 67 | 100% | Rodrigo Paz [50%]; Sol Careaga [50%] | 16h | T | 2 | 16 | 100 |
| 80 | 1.11.8 | Suite de integración de tickets en Firestore (3 tests) | 2d | 2026-10-21 A | 2026-10-22 A | 68 | 100% | Rodrigo Paz [50%]; Sol Careaga [50%] | 16h | V | 2 | 16 | 100 |
| 81 | 1.11.9 | Suite de marcadores de mapa en Firestore (2 tests) | 2d | 2026-10-06 A | 2026-10-07 A | 45 | 100% | Rodrigo Paz [50%]; Martina Guenin [50%] | 16h | V | 2 | 16 | 100 |
| 82 | 1.11.10 | Prueba de humo live contra Cloud Firestore (1 test) | 1d | 2026-10-22 A | 2026-10-22 A | 80 | 100% | Rodrigo Paz [50%]; Jonatan Rosas [50%] | 8h | V | 1 | 8 | 100 |
| 83 | 1.11.11 | Verificación de regla arquitectónica de menos de 150 líneas | 1d | 2026-10-23 A | 2026-10-23 A | 75 | 100% | Rodrigo Paz | 8h | V | 1 | 8 | 100 |
| 84 | 1.11.12 | Verificación de 0 errores TypeScript (npx tsc --noEmit) | 1d | 2026-10-23 A | 2026-10-23 A | 83 | 100% | Jonatan Rosas [50%]; Rodrigo Paz [50%] | 8h | V | 1 | 8 | 100 |

| ID | WBS | Task | Duration | Start | Finish | Predecessors | Complete | Resources | Work | Costos | Number1 | Number2 | Number6 |
| --- | --- | --- | --- | --- | --- | --- | --- | --- | --- | --- | --- | --- | --- |
| 85 | 1.12 | **Cierre de Proyecto, Integración de Ramas y Presentación** | 7d | 2026-10-16 A | 2026-10-26 A | 75 | 100% |  | 56h | V | 7 | 56 | 100 |
| 86 | 1.12.1 | Reestructuración del equipo en 3 Células Autónomas (2+2+3) | 2d | 2026-10-16 A | 2026-10-19 A |  | 100% | Jonatan Rosas [50%]; Sol Careaga [50%] | 16h | V | 2 | 16 | 100 |
| 87 | 1.12.2 | Conciliación manual y resolución de conflictos de merge en Git | 3d | 2026-10-20 A | 2026-10-22 A | 86 | 100% | Jonatan Rosas [50%]; Rodrigo Paz [50%] | 24h | R | 3 | 24 | 100 |
| 88 | 1.12.3 | Ejecución final de la suite completa de 59 tests (100% PASS) | 1d | 2026-10-23 A | 2026-10-23 A | 87, 84 | 100% | Rodrigo Paz [50%]; Jonatan Rosas [50%] | 8h | V | 1 | 8 | 100 |
| 89 | 1.12.4 | Consolidación del Plan de Proyecto y Dossier Integral | 2d | 2026-10-23 A | 2026-10-26 A | 88 | 100% | Sol Careaga [50%]; Jonatan Rosas [50%] | 16h | V | 2 | 16 | 100 |
| 90 | 1.12.5 | Generación del Tablero Maestro de Control en Excel con diagramas | 1d | 2026-10-26 A | 2026-10-26 A | 89 | 100% | Jonatan Rosas [50%]; Sol Careaga [50%] | 8h | V | 1 | 8 | 100 |
| 91 | 1.12.6 | Compilación del archivo Microsoft Project con semáforos y asignaciones | 1d | 2026-10-26 A | 2026-10-26 A | 90 | 100% | Jonatan Rosas [50%]; Rodrigo Paz [50%] | 8h | V | 1 | 8 | 100 |
| 92 | 1.12.7 | Ensayo de defensa técnica y presentación oral ante la cátedra | 1d | 2026-10-26 A | 2026-10-26 A | 91 | 100% | Pedro Brest [10%]; Jonatan Rosas [15%]; Sol Careaga [15%]; Rodrigo Paz [15%]; Maximiliano Duarte [15%]; Francisco González [15%]; Yerik Ramos [15%] | 8h | V | 1 | 8 | 100 |
